Schedule from MS Project, 2016-09-05 to 2016-12-16.

## Calendars

- Standard: Mon-Fri 08:00-12:00, 13:00-17:00; Sat-Sun off.

## Resources

| Resource |
| --- |
| HungDH |
| KienMT |
| TEAM |
| TEAM DEV |
| TEAM DOC |
| AnNP |
| AnhND |
| DungNT |
| TEAN DOC |

## Schedule

| ID | WBS | Task | Type | Duration | Start | Finish | Predecessors | Total slack | Free slack | Resources | Work |
| --- | --- | --- | --- | --- | --- | --- | --- | --- | --- | --- | --- |
| 1 | 1 | **FAVN** |  | 75d | 2016-09-05 | 2016-12-16 |  | 0d |  |  | 1326h |
| 2 | 1.1 | **Initiation** |  | 14d | 2016-09-05 | 2016-09-22 |  | 0d |  |  | 226h |
| 3 | 1.1.1 | **Develop project idea** |  | 0.5d | 2016-09-05 | 2016-09-05 |  | 0d |  |  | 4h |
| 4 | 1.1.1.1 | Define project scope |  | 0.25d | 2016-09-05 | 2016-09-05 |  | 0d |  | TEAM | 2h |
| 5 | 1.1.1.2 | Define project features |  | 0.25d | 2016-09-05 | 2016-09-05 | 4 | 0d |  | TEAM | 2h |
| 6 | 1.1.2 | Form up team roles |  | 0.5d | 2016-09-05 | 2016-09-05 | 3 | 0d |  | TEAM | 4h |
| 7 | 1.1.3 | Kick-off meeting |  | 0.5d | 2016-09-06 | 2016-09-06 | 6 | 0d |  | TEAM | 4h |
| 8 | 1.1.4 | **Project Introduction** |  | 2.5d | 2016-09-06 | 2016-09-08 |  | 0d |  |  | 20h |
| 9 | 1.1.4.1 | Create Project Introduction |  | 2d | 2016-09-06 | 2016-09-08 | 7 | 0d |  | TEAM | 16h |
| 10 | 1.1.4.2 | Review Project Introduction |  | 0.25d | 2016-09-08 | 2016-09-08 | 9 | 0d |  | TEAM | 2h |
| 11 | 1.1.4.3 | Update Project Introduction |  | 0.25d | 2016-09-08 | 2016-09-08 | 10 | 0d |  | TEAM | 2h |
| 12 | 1.1.4.4 | Complete Project Introduction | milestone | 0d | 2016-09-08 | 2016-09-08 | 11 | 0d |  | TEAM |  |
| 13 | 1.1.5 | **Environment** |  | 1d | 2016-09-09 | 2016-09-09 |  | 0d |  |  | 8h |
| 14 | 1.1.5.1 | Create guideline to install and use tools, environment |  | 0.5d | 2016-09-09 | 2016-09-09 | 12 | 0d |  | KienMT | 4h |
| 15 | 1.1.5.2 | Setup environment |  | 0.5d | 2016-09-09 | 2016-09-09 | 14 | 0d |  | TEAM | 4h |
| 16 | 1.1.6 | **Technologies** |  | 7d | 2016-09-12 | 2016-09-20 |  | 0.75d |  |  | 104h |
| 17 | 1.1.6.1 | Study Android |  | 6d | 2016-09-12 | 2016-09-19 | 15 | 3d |  | HungDH | 48h |
| 18 | 1.1.6.2 | Study PHP, MySQL |  | 3d | 2016-09-12 | 2016-09-14 | 15 | 0.75d | 0d | KienMT | 24h |
| 19 | 1.1.6.3 | Study Laravel |  | 4d | 2016-09-15 | 2016-09-20 | 18 | 0.75d | 0d | KienMT | 32h |
| 20 | 1.1.7 | **Project Plan** |  | 8.25d | 2016-09-12 | 2016-09-22 |  | 0d |  |  | 44h |
| 21 | 1.1.7.1 | Create Project Schedule |  | 1d | 2016-09-21 | 2016-09-21 | 19 | 0.75d | 0d | TEAM DEV | 8h |
| 22 | 1.1.7.2 | Review and update Project Schedule |  | 0.25d | 2016-09-22 | 2016-09-22 | 21 | 0.75d |  | TEAM DEV | 2h |
| 23 | 1.1.7.3 | Create Project Plan |  | 2d | 2016-09-12 | 2016-09-13 | 15 | 0d |  | TEAM DOC | 16h |
| 24 | 1.1.7.4 | Review and update Project Plan |  | 0.25d | 2016-09-14 | 2016-09-14 | 23 | 0d |  | TEAM DOC | 2h |
| 25 | 1.1.7.5 | Create CM Plan |  | 0.5d | 2016-09-14 | 2016-09-14 | 24 | 0d |  | TEAM DOC | 4h |
| 26 | 1.1.7.6 | Review and update CM Plan |  | 0.25d | 2016-09-14 | 2016-09-14 | 25 | 0d |  | TEAM DOC | 2h |
| 27 | 1.1.7.7 | Create Risk Management Plan |  | 1d | 2016-09-15 | 2016-09-15 | 26 | 0d |  | TEAM DOC | 8h |
| 28 | 1.1.7.8 | Review and Risk Management Plan |  | 0.25d | 2016-09-16 | 2016-09-16 | 27 | 0d |  | TEAM DOC | 2h |

| ID | WBS | Task | Type | Duration | Start | Finish | Predecessors | Total slack | Free slack | Resources | Work |
| --- | --- | --- | --- | --- | --- | --- | --- | --- | --- | --- | --- |
| 29 | 1.1.8 | **User Requirement Specification** |  | 3.25d | 2016-09-16 | 2016-09-21 |  | 0d |  |  | 26h |
| 30 | 1.1.8.1 | Define user requirements |  | 1d | 2016-09-16 | 2016-09-19 | 28 | 0d |  | TEAM DOC | 8h |
| 31 | 1.1.8.2 | Create URS document |  | 2d | 2016-09-19 | 2016-09-21 | 30 | 0d |  | TEAM DOC | 16h |
| 32 | 1.1.8.3 | Review and update URS document |  | 0.25d | 2016-09-21 | 2016-09-21 | 31 | 0d |  | TEAM DOC | 2h |
| 33 | 1.1.8.4 | Complete User Requirements | milestone | 0d | 2016-09-21 | 2016-09-21 | 32 | 0d |  | TEAM |  |
| 34 | 1.1.9 | **Q&A Sheet** |  | 1.25d | 2016-09-21 | 2016-09-22 |  | 0d |  |  | 10h |
| 35 | 1.1.9.1 | Create Q&A sheet |  | 1d | 2016-09-21 | 2016-09-22 | 33 | 0d |  | AnNP | 8h |
| 36 | 1.1.9.2 | Review Q&A sheet |  | 0.25d | 2016-09-22 | 2016-09-22 | 35 | 0d |  | AnhND | 2h |
| 37 | 1.1.10 | Create progress report 1 |  | 0.25d | 2016-09-22 | 2016-09-22 | 36 | 0d |  | TEAM DOC | 2h |
| 38 | 1.1.11 | Submit progress report 1 | milestone | 0d | 2016-09-22 | 2016-09-22 | 37 | 0d |  | TEAM DOC |  |
| 39 | 1.2 | **Solution** |  | 16.5d | 2016-09-23 | 2016-10-17 | 2 | 0d |  |  | 384h |
| 40 | 1.2.1 | Collect data |  | 3d | 2016-09-23 | 2016-09-27 |  | 7d | 0d | TEAM DOC | 24h |
| 41 | 1.2.2 | **Demo & mock-ups** |  | 2.5d | 2016-09-23 | 2016-09-27 |  | 0d |  |  | 28h |
| 42 | 1.2.2.1 | Create Demo |  | 1d | 2016-09-23 | 2016-09-23 |  | 0d |  | KienMT | 8h |
| 43 | 1.2.2.2 | Design mock-ups |  | 2d | 2016-09-23 | 2016-09-26 |  | 8d | 0d | HungDH | 16h |
| 44 | 1.2.2.3 | Review and update mock-up |  | 0.5d | 2016-09-27 | 2016-09-27 | 43 | 8d | 0d | HungDH | 4h |
| 45 | 1.2.3 | **Software Requirement Specification** |  | 4d | 2016-09-23 | 2016-09-28 |  | 3d |  |  | 40h |
| 46 | 1.2.3.1 | **Functional Requirements Specification** |  | 4d | 2016-09-23 | 2016-09-28 |  | 3d |  |  | 32h |
| 47 | 1.2.3.1.1 | Admin/Expert functions |  | 1d | 2016-09-23 | 2016-09-23 |  | 3d | 0d | DungNT | 8h |
| 48 | 1.2.3.1.2 | Dispatcher functions |  | 1d | 2016-09-26 | 2016-09-26 | 47 | 3d | 0d | DungNT | 8h |
| 49 | 1.2.3.1.3 | First Aid functions |  | 1d | 2016-09-27 | 2016-09-27 | 48 | 3d | 0d | DungNT | 8h |
| 50 | 1.2.3.1.4 | Ambulance functions |  | 1d | 2016-09-28 | 2016-09-28 | 40 | 12.5d |  | AnhND | 8h |
| 51 | 1.2.3.2 | Non-functional Requirements Specification |  | 0.5d | 2016-09-28 | 2016-09-28 | 40 | 7d | 0d | AnNP | 4h |
| 52 | 1.2.3.3 | Other parts |  | 0.5d | 2016-09-28 | 2016-09-28 | 49 | 3d | 0d | DungNT | 4h |
| 53 | 1.2.3.4 | Complete Software Requirements | milestone | 0d | 2016-09-28 | 2016-09-28 | 52 | 13d |  |  |  |

| ID | WBS | Task | Type | Duration | Start | Finish | Predecessors | Total slack | Free slack | Resources | Work |
| --- | --- | --- | --- | --- | --- | --- | --- | --- | --- | --- | --- |
| 54 | 1.2.4 | **System Design** |  | 14.5d | 2016-09-26 | 2016-10-14 | 42 | 0d |  |  | 236h |
| 55 | 1.2.4.1 | Create design review checklist |  | 1d | 2016-09-26 | 2016-09-26 |  | 0d |  | KienMT | 8h |
| 56 | 1.2.4.2 | **Architectural Design** |  | 6.5d | 2016-09-27 | 2016-10-05 |  | 0d |  |  | 80h |
| 57 | 1.2.4.2.1 | Define architectural design |  | 1d | 2016-09-27 | 2016-09-27 | 55 | 0d |  | KienMT | 8h |
| 58 | 1.2.4.2.2 | Define system features |  | 2d | 2016-09-27 | 2016-09-29 | 44 | 8d | 0d | HungDH | 16h |
| 59 | 1.2.4.2.3 | Study and choose suitable architectural design |  | 2d | 2016-09-28 | 2016-09-29 | 57 | 0d |  | KienMT | 16h |
| 60 | 1.2.4.2.4 | Create Architectural design |  | 3d | 2016-09-29 | 2016-10-04 | 58 | 8d | 0d | HungDH | 24h |
| 61 | 1.2.4.2.5 | Review architectural design |  | 1d | 2016-09-30 | 2016-09-30 | 59 | 0d |  | KienMT | 8h |
| 62 | 1.2.4.2.6 | Update Architectural Design |  | 1d | 2016-10-04 | 2016-10-05 | 60 | 8d | 0d | HungDH | 8h |
| 63 | 1.2.4.2.7 | Complete Architectural Design version 1.0 | milestone | 0d | 2016-10-05 | 2016-10-05 | 62 | 8d |  | TEAM DEV |  |
| 64 | 1.2.4.3 | **Screen design** |  | 6.5d | 2016-09-28 | 2016-10-06 |  | 0.5d |  |  | 64h |
| 65 | 1.2.4.3.1 | Create mobile screen design |  | 4d | 2016-09-28 | 2016-10-04 | 52 | 3d | 0d | DungNT | 32h |
| 66 | 1.2.4.3.2 | Create web screen design |  | 2d | 2016-10-03 | 2016-10-04 | 61 | 0d |  | KienMT | 16h |
| 67 | 1.2.4.3.3 | Review screen design |  | 1d | 2016-10-05 | 2016-10-05 | 66 | 0d |  | KienMT | 8h |
| 68 | 1.2.4.3.4 | Update screen design |  | 1d | 2016-10-06 | 2016-10-06 | 67 | 0d |  | TEAM DEV | 8h |
| 69 | 1.2.4.3.5 | Complete screen design | milestone | 0d | 2016-10-06 | 2016-10-06 | 68 | 0d |  | TEAM DEV |  |
| 70 | 1.2.4.4 | **Database design** |  | 4d | 2016-10-07 | 2016-10-12 |  | 0d |  |  | 36h |
| 71 | 1.2.4.4.1 | Create database design |  | 3d | 2016-10-07 | 2016-10-11 | 69 | 2.5d | 0d | KienMT | 24h |
| 72 | 1.2.4.4.2 | Review database design |  | 0.5d | 2016-10-07 | 2016-10-07 | 69 | 0d |  | HungDH | 4h |
| 73 | 1.2.4.4.3 | Update database design |  | 1d | 2016-10-12 | 2016-10-12 | 71 | 2.5d | 0d | KienMT | 8h |
| 74 | 1.2.4.4.4 | Complete database design | milestone | 0d | 2016-10-12 | 2016-10-12 | 73 | 2.5d |  | TEAM DEV |  |
| 75 | 1.2.4.5 | **Class/Component Design** |  | 8d | 2016-10-04 | 2016-10-14 | 65 | 1d |  |  | 48h |
| 76 | 1.2.4.5.1 | Define Class and Component |  | 1d | 2016-10-07 | 2016-10-10 | 72 | 0d |  | HungDH | 8h |
| 77 | 1.2.4.5.2 | Create Class/component design |  | 3d | 2016-10-10 | 2016-10-13 | 76 | 0d |  | HungDH | 24h |
| 78 | 1.2.4.5.3 | Review Class/component design |  | 1d | 2016-10-04 | 2016-10-05 | 65 | 8d |  | DungNT | 8h |
| 79 | 1.2.4.5.4 | Update Class/component design |  | 1d | 2016-10-13 | 2016-10-14 | 77 | 0d |  | HungDH | 8h |
| 80 | 1.2.4.5.5 | Complete Class/component design | milestone | 0d | 2016-10-14 | 2016-10-14 | 79 | 0d |  | TEAM DEV |  |
| 81 | 1.2.5 | Create progress report 2 |  | 1d | 2016-10-14 | 2016-10-17 | 80 | 0d |  | TEAM DEV | 8h |
| 82 | 1.2.6 | Submit progress report 2 | milestone | 0d | 2016-10-17 | 2016-10-17 | 81 | 0d |  | TEAM |  |

| ID | WBS | Task | Type | Duration | Start | Finish | Predecessors | Total slack | Free slack | Resources | Work |
| --- | --- | --- | --- | --- | --- | --- | --- | --- | --- | --- | --- |
| 83 | 1.2.7 | **Testing** |  | 5d | 2016-09-28 | 2016-10-05 |  | 7d |  |  | 40h |
| 84 | 1.2.7.1 | Create test plan review checklists |  | 0.5d | 2016-09-28 | 2016-09-28 | 51 | 7d | 0d | TEAM DOC | 4h |
| 85 | 1.2.7.2 | Create test case review checklists |  | 0.5d | 2016-09-29 | 2016-09-29 | 84 | 7d | 0d | TEAM DOC | 4h |
| 86 | 1.2.7.3 | Create test plan |  | 2d | 2016-09-29 | 2016-10-03 | 85 | 7d | 0d | TEAM DOC | 16h |
| 87 | 1.2.7.4 | Review test plan |  | 1d | 2016-10-03 | 2016-10-04 | 86 | 7d | 0d | TEAM DOC | 8h |
| 88 | 1.2.7.5 | Update test plan |  | 1d | 2016-10-04 | 2016-10-05 | 87 | 7d | 0d | TEAM DOC | 8h |
| 89 | 1.2.7.6 | Test plan complete | milestone | 0d | 2016-10-05 | 2016-10-05 | 88 | 7d | 0d | TEAM DOC |  |
| 90 | 1.2.8 | Create progress report 3 |  | 1d | 2016-10-05 | 2016-10-06 | 89 | 7d | 0d | TEAM DOC | 8h |
| 91 | 1.2.9 | Submit progress report 3 | milestone | 0d | 2016-10-06 | 2016-10-06 | 90 | 7d |  | TEAM |  |
| 92 | 1.3 | **Construction** |  | 28.5d | 2016-10-17 | 2016-11-24 | 39 | 0d |  |  | 572h |
| 93 | 1.3.1 | **Define Coding Standards** |  | 1d | 2016-10-17 | 2016-10-18 |  | 0d |  |  | 16h |
| 94 | 1.3.1.1 | Create Coding Convention |  | 1d | 2016-10-17 | 2016-10-18 |  | 0d |  | HungDH | 8h |
| 95 | 1.3.1.2 | Create Code & UT Test review checklist |  | 1d | 2016-10-17 | 2016-10-18 |  | 0d |  | KienMT | 8h |
| 96 | 1.3.2 | **Screen Design** |  | 1d | 2016-10-18 | 2016-10-19 |  | 0d |  |  | 8h |
| 97 | 1.3.2.1 | Refine screen design document and prototype |  | 1d | 2016-10-18 | 2016-10-19 | 94, 95 | 0d |  | TEAM DEV | 8h |
| 98 | 1.3.3 | **Coding & Unit test** |  | 19d | 2016-10-19 | 2016-11-15 | 97 | 0d |  |  | 304h |
| 99 | 1.3.3.1 | Structure core modules |  | 2d | 2016-10-19 | 2016-10-21 |  | 0d |  | HungDH | 16h |
| 100 | 1.3.3.2 | Webservice system |  | 3d | 2016-10-19 | 2016-10-24 |  | 4d | 0d | KienMT | 24h |
| 101 | 1.3.3.3 | **Web app modules** |  | 16d | 2016-10-24 | 2016-11-15 |  | 4d |  |  | 128h |
| 102 | 1.3.3.3.1 | **Admin/Expert site module** |  | 13d | 2016-10-24 | 2016-11-10 |  | 4d |  |  | 104h |
| 103 | 1.3.3.3.1.1 | **Expert role module** |  | 7d | 2016-10-24 | 2016-11-02 |  | 4d |  |  | 56h |
| 104 | 1.3.3.3.1.1.1 | Dashboard module |  | 2d | 2016-10-24 | 2016-10-26 | 100 | 4d | 0d | KienMT | 16h |
| 105 | 1.3.3.3.1.1.2 | Profile module |  | 1d | 2016-10-26 | 2016-10-27 | 104 | 4d | 0d | KienMT | 8h |
| 106 | 1.3.3.3.1.1.3 | Q & A module |  | 2d | 2016-10-27 | 2016-10-31 | 105 | 4d | 0d | KienMT | 16h |
| 107 | 1.3.3.3.1.1.4 | Notifications module |  | 1d | 2016-10-31 | 2016-11-01 | 106 | 4d | 0d | KienMT | 8h |
| 108 | 1.3.3.3.1.1.5 | Information statistic module |  | 1d | 2016-11-01 | 2016-11-02 | 107 | 4d | 0d | KienMT | 8h |

| ID | WBS | Task | Type | Duration | Start | Finish | Predecessors | Total slack | Free slack | Resources | Work |
| --- | --- | --- | --- | --- | --- | --- | --- | --- | --- | --- | --- |
| 109 | 1.3.3.3.1.2 | **Admin role module** |  | 6d | 2016-11-02 | 2016-11-10 |  | 7.5d |  |  | 48h |
| 110 | 1.3.3.3.1.2.1 | Manage user admin module |  | 1d | 2016-11-02 | 2016-11-03 | 108 | 7.5d | 0d | KienMT | 8h |
| 111 | 1.3.3.3.1.2.2 | Manage user expert module |  | 1d | 2016-11-03 | 2016-11-04 | 110 | 7.5d | 0d | KienMT | 8h |
| 112 | 1.3.3.3.1.2.3 | Manage user dispatcher module |  | 1d | 2016-11-04 | 2016-11-07 | 111 | 7.5d | 0d | KienMT | 8h |
| 113 | 1.3.3.3.1.2.4 | Manage user ambulance module |  | 1d | 2016-11-07 | 2016-11-08 | 112 | 7.5d | 0d | KienMT | 8h |
| 114 | 1.3.3.3.1.2.5 | Manage Notifications module |  | 2d | 2016-11-08 | 2016-11-10 | 113 | 7.5d | 0d | KienMT | 16h |
| 115 | 1.3.3.3.2 | Dispatcher site module |  | 3d | 2016-11-10 | 2016-11-15 | 114 | 7.5d |  | KienMT | 24h |
| 116 | 1.3.3.4 | **Mobile app modules** |  | 14d | 2016-10-19 | 2016-11-08 |  | 2d |  |  | 136h |
| 117 | 1.3.3.4.1 | **First Aid app module** |  | 12d | 2016-10-21 | 2016-11-08 |  | 0d |  |  | 96h |
| 118 | 1.3.3.4.1.1 | Emergency module |  | 4d | 2016-10-21 | 2016-10-27 | 99 | 0d |  | HungDH | 32h |
| 119 | 1.3.3.4.1.2 | Learning module |  | 2d | 2016-10-27 | 2016-10-31 | 118 | 0d |  | HungDH | 16h |
| 120 | 1.3.3.4.1.3 | Setting module |  | 2d | 2016-10-31 | 2016-11-02 | 119 | 0d |  | HungDH | 16h |
| 121 | 1.3.3.4.1.4 | More module |  | 2d | 2016-11-02 | 2016-11-04 | 120 | 0d |  | HungDH | 16h |
| 122 | 1.3.3.4.1.5 | User interaction module |  | 2d | 2016-11-04 | 2016-11-08 | 121 | 0d |  | HungDH | 16h |
| 123 | 1.3.3.4.2 | **Ambulace app module** |  | 5d | 2016-10-19 | 2016-10-26 |  | 20.5d |  |  | 40h |
| 124 | 1.3.3.4.2.1 | Emergency module |  | 3d | 2016-10-19 | 2016-10-24 |  | 20.5d | 0d | DungNT | 24h |
| 125 | 1.3.3.4.2.2 | Login/ Logout/ View history/ module |  | 2d | 2016-10-24 | 2016-10-26 | 124 | 20.5d | 0d | DungNT | 16h |
| 126 | 1.3.4 | Create Progress Report 4 |  | 1d | 2016-10-26 | 2016-10-27 | 125 | 20.5d | 0d | DungNT | 8h |
| 127 | 1.3.5 | Submit Progress Report 4 | milestone | 0d | 2016-10-27 | 2016-10-27 | 126 | 20.5d |  |  |  |
| 128 | 1.3.6 | **Testing** |  | 24.5d | 2016-10-17 | 2016-11-18 |  | 4d |  |  | 204h |
| 129 | 1.3.6.1 | **Writing test case** |  | 21d | 2016-10-17 | 2016-11-15 |  | 7.5d |  |  | 96h |
| 130 | 1.3.6.1.1 | **System test case** |  | 6d | 2016-10-17 | 2016-10-25 |  | 22.5d |  |  | 48h |
| 131 | 1.3.6.1.1.1 | Create system test case |  | 4d | 2016-10-17 | 2016-10-21 |  | 22.5d | 0d | AnhND | 32h |
| 132 | 1.3.6.1.1.2 | Review system test case |  | 1d | 2016-10-21 | 2016-10-24 | 131 | 22.5d | 0d | AnhND | 8h |
| 133 | 1.3.6.1.1.3 | Update system test case |  | 1d | 2016-10-24 | 2016-10-25 | 132 | 22.5d |  | AnhND | 8h |

| ID | WBS | Task | Type | Duration | Start | Finish | Predecessors | Total slack | Free slack | Resources | Work |
| --- | --- | --- | --- | --- | --- | --- | --- | --- | --- | --- | --- |
| 134 | 1.3.6.1.2 | **Integration test case** |  | 6d | 2016-10-17 | 2016-10-25 |  | 22.5d |  |  | 48h |
| 135 | 1.3.6.1.2.1 | Create integration test case |  | 4d | 2016-10-17 | 2016-10-21 |  | 22.5d | 0d | AnNP | 32h |
| 136 | 1.3.6.1.2.2 | Review integration test case |  | 1d | 2016-10-21 | 2016-10-24 | 135 | 22.5d | 0d | AnNP | 8h |
| 137 | 1.3.6.1.2.3 | Update integration test case |  | 1d | 2016-10-24 | 2016-10-25 | 136 | 22.5d |  | AnNP | 8h |
| 138 | 1.3.6.1.3 | Writing test case complete | milestone | 0d | 2016-11-15 | 2016-11-15 | 98 | 7.5d |  | TEAM DOC |  |
| 139 | 1.3.6.2 | **Execute Test Round 1** |  | 5d | 2016-11-08 | 2016-11-15 | 108, 122 | 0d |  |  | 56h |
| 140 | 1.3.6.2.1 | Execute Integration Test |  | 2d | 2016-11-08 | 2016-11-10 |  | 0d |  | AnNP | 16h |
| 141 | 1.3.6.2.2 | Fix bug Integration Test |  | 2d | 2016-11-10 | 2016-11-14 | 140 | 1d |  | TEAM DEV | 16h |
| 142 | 1.3.6.2.3 | Execute System Test |  | 2d | 2016-11-10 | 2016-11-14 | 140 | 0d |  | AnhND | 16h |
| 143 | 1.3.6.2.4 | Fix bug System Test |  | 1d | 2016-11-14 | 2016-11-15 | 142 | 0d |  | TEAM DEV | 8h |
| 144 | 1.3.6.3 | Update Test Case |  | 1d | 2016-11-14 | 2016-11-15 | 142 | 7.5d |  | TEAM DOC | 8h |
| 145 | 1.3.6.4 | **Execute Test Round 2** |  | 3d | 2016-11-15 | 2016-11-18 | 139 | 0d |  |  | 32h |
| 146 | 1.3.6.4.1 | Execute Integration Test |  | 1d | 2016-11-15 | 2016-11-16 |  | 0d |  | AnNP | 8h |
| 147 | 1.3.6.4.2 | Fix bug Integration Test |  | 1d | 2016-11-16 | 2016-11-17 | 146 | 5.5d |  | TEAM DEV | 8h |
| 148 | 1.3.6.4.3 | Execute System Test |  | 1d | 2016-11-16 | 2016-11-17 | 146 | 0d |  | AnhND | 8h |
| 149 | 1.3.6.4.4 | Fix bug System Test |  | 1d | 2016-11-17 | 2016-11-18 | 148 | 4.5d |  | TEAM DEV | 8h |
| 150 | 1.3.6.5 | Create Test Report |  | 1.5d | 2016-11-17 | 2016-11-18 | 148 | 0d |  | TEAM DOC | 12h |
| 151 | 1.3.6.6 | Testing Complete | milestone | 0d | 2016-11-18 | 2016-11-18 | 150 | 0d |  | TEAN DOC |  |
| 152 | 1.3.7 | **Quality Control** |  | 3d | 2016-11-21 | 2016-11-23 | 151 | 0d |  |  | 24h |
| 153 | 1.3.7.1 | Create Quality Report |  | 1d | 2016-11-21 | 2016-11-21 |  | 0d |  | AnhND | 8h |
| 154 | 1.3.7.2 | Review Quality Report |  | 1d | 2016-11-22 | 2016-11-22 | 153 | 0d |  | AnNP | 8h |
| 155 | 1.3.7.3 | Update Quality Report |  | 1d | 2016-11-23 | 2016-11-23 | 154 | 0d |  | AnhND | 8h |
| 156 | 1.3.8 | Create Progress Report 5 |  | 1d | 2016-11-24 | 2016-11-24 | 155 | 0d |  | AnNP | 8h |
| 157 | 1.3.9 | Submit Progress Report 5 | milestone | 0d | 2016-11-24 | 2016-11-24 | 156 | 0d |  | TEAM DOC |  |

| ID | WBS | Task | Type | Duration | Start | Finish | Predecessors | Total slack | Resources | Work |
| --- | --- | --- | --- | --- | --- | --- | --- | --- | --- | --- |
| 158 | 1.4 | **Termination** |  | 16d | 2016-11-25 | 2016-12-16 | 92 | 0d |  | 144h |
| 159 | 1.4.1 | **Final Report Document** |  | 8d | 2016-11-25 | 2016-12-06 |  | 0d |  | 80h |
| 160 | 1.4.1.1 | Create Final Report document |  | 2d | 2016-11-25 | 2016-11-28 |  | 14d | TEAM DOC | 16h |
| 161 | 1.4.1.2 | Create Installing Guide |  | 2d | 2016-11-25 | 2016-11-28 |  | 0d | TEAM DEV | 16h |
| 162 | 1.4.1.3 | Create User Guideline |  | 2d | 2016-11-29 | 2016-11-30 | 161 | 0d | TEAM DEV | 16h |
| 163 | 1.4.1.4 | Create Project Result Assessment |  | 2d | 2016-12-01 | 2016-12-02 | 162 | 0d | TEAM | 16h |
| 164 | 1.4.1.5 | Create Slides for Final Presentation |  | 2d | 2016-12-05 | 2016-12-06 | 163 | 0d | TEAM | 16h |
| 165 | 1.4.2 | Submit all Final Documents and Source codes | milestone | 0d | 2016-12-06 | 2016-12-06 | 164 | 0d | TEAM |  |
| 166 | 1.4.3 | **Pre-closing** |  | 5d | 2016-12-07 | 2016-12-13 |  | 0d |  | 40h |
| 167 | 1.4.3.1 | Trainning presentation |  | 5d | 2016-12-07 | 2016-12-13 | 165 | 0d | TEAM | 40h |
| 168 | 1.4.4 | **Closing** |  | 3d | 2016-12-14 | 2016-12-16 |  | 0d |  | 24h |
| 169 | 1.4.4.1 | Presentation for Capstone Project |  | 3d | 2016-12-14 | 2016-12-16 | 167 | 0d | TEAM | 24h |
| 170 | 1.4.4.2 | Complete Project | milestone | 0d | 2016-12-16 | 2016-12-16 | 169 | 0d | TEAM |  |
